# Krisalida Gestion de Tareas

Schedule from MS Project, 2024-09-01 to 2024-12-31, costs in $.
O.S.S.I.

## Calendars

- Estándar: Mon-Fri 09:00-13:00, 15:00-19:00; Sat-Sun off.

## Resources

| Resource | Rate |
| --- | --- |
| Project Owner |  |
| Scrum Master | 18.44 |
| Desarrollador: Kevin Suntaxi | 5 |
| Desarrollador: Christian Andrango | 5 |
| Ingeniero de Requisitos | 4.38 |
| Tester | 7.48 |

## Schedule

| ID | WBS | Task | Type | Duration | Start | Finish | Predecessors | Resources | Work | Cost |
| --- | --- | --- | --- | --- | --- | --- | --- | --- | --- | --- |
| 1 | 1 | Ecommerce Krisalida | manual | 88d | 2024-09-01 | 2024-12-31 |  |  |  |  |
| 2 | 2 | **Inicio del desarrollo. Establecer el ambiente de desarrollo** |  | 1d | 2024-09-02 | 2024-09-02 | 1 | Project Owner; Scrum Master | 32h | 227.52 |
| 3 | 2.1 | Instalacion de herramientas de desarrollo. (git, visual studio code, node, mongodb, etc) | manual | 1d | 2024-09-02 | 2024-09-02 |  | Desarrollador: Kevin Suntaxi; Desarrollador: Christian Andrango | 16h | 80 |
| 4 | 3 | **Diseño de Base de Datos** |  | 5d | 2024-09-03 | 2024-09-09 | 2 |  | 40h | 200 |
| 5 | 3.1 | Diseño del modelo de datos | manual | 4d | 2024-09-03 | 2024-09-06 |  | Desarrollador: Kevin Suntaxi | 32h | 160 |
| 6 | 3.2 | Creación de colecciones | manual | 1d | 2024-09-09 | 2024-09-09 | 5 | Desarrollador: Kevin Suntaxi | 8h | 40 |
| 7 | 4 | **Conexiones** |  | 5d | 2024-09-10 | 2024-09-16 | 4 |  | 40h | 200 |
| 8 | 4.1 | Configuración de la conexión con el servidor de BD | manual | 5d | 2024-09-10 | 2024-09-16 |  | Desarrollador: Christian Andrango | 40h | 200 |
| 9 | 5 | **Desarrollo de APIs** |  | 5d | 2024-09-17 | 2024-09-23 | 7 |  | 40h | 200 |
| 10 | 5.1 | Creación de API para manejo de datos CRUD | manual | 4d | 2024-09-17 | 2024-09-20 |  | Desarrollador: Kevin Suntaxi | 32h | 160 |
| 11 | 5.2 | Implementación de autenticación y autorización | manual | 1d | 2024-09-23 | 2024-09-23 | 10 | Desarrollador: Kevin Suntaxi | 8h | 40 |
| 12 | 6 | **Pruebas** |  | 5d | 2024-09-17 | 2024-09-23 | 9 |  | 16h | 119.68 |
| 13 | 6.1 | Pruebas unitarias de funciones de la API | manual | 1d | 2024-09-17 | 2024-09-17 |  | Tester | 8h | 59.84 |
| 14 | 6.2 | Pruebas de integración entre API y base de datos | manual | 1d | 2024-09-18 | 2024-09-18 | 13 | Tester | 8h | 59.84 |
| 15 | 7 | **Diseño de Interfaz** |  | 5d | 2024-09-24 | 2024-09-30 | 12 |  | 40h | 200 |
| 16 | 7.1 | Creación de prototipos con herramientas de diseño | manual | 2d | 2024-09-24 | 2024-09-25 |  | Desarrollador: Christian Andrango | 16h | 80 |
| 17 | 7.2 | Implementación de layouts con React | manual | 3d | 2024-09-26 | 2024-09-30 | 16 | Desarrollador: Christian Andrango | 24h | 120 |
| 18 | 8 | **Desarrollo de Componentes** |  | 5d | 2024-10-01 | 2024-10-07 | 15 |  | 40h | 200 |
| 19 | 8.1 | Desarrollo de componentes básicos (botones, formularios, etc.) | manual | 3d | 2024-10-01 | 2024-10-03 |  | Desarrollador: Christian Andrango | 24h | 120 |
| 20 | 8.2 | Implementación de la navegación y enrutamiento | manual | 1d | 2024-10-04 | 2024-10-04 | 19 | Desarrollador: Christian Andrango | 8h | 40 |
| 21 | 8.3 | Integración de librerías de UI | manual | 1d | 2024-10-07 | 2024-10-07 | 20 | Desarrollador: Christian Andrango | 8h | 40 |
| 22 | 9 | **Integración con APIs** |  | 5d | 2024-10-08 | 2024-10-14 | 18 |  | 48h | 259.84 |
| 23 | 9.1 | Consumo de APIs para mostrar datos en la interfaz | manual | 3d | 2024-10-08 | 2024-10-10 |  | Desarrollador: Kevin Suntaxi | 24h | 120 |
| 24 | 9.2 | Implementación de validaciones y manejo de errores | manual | 2d | 2024-10-11 | 2024-10-12 | 23 | Desarrollador: Kevin Suntaxi | 16h | 80 |
| 25 | 9.3 | Pruebas de funcionalidad de interacción con las APIs | manual | 1d | 2024-10-14 | 2024-10-14 | 24 | Tester | 8h | 59.84 |

| ID | WBS | Task | Type | Duration | Start | Finish | Predecessors | Resources | Work | Cost |
| --- | --- | --- | --- | --- | --- | --- | --- | --- | --- | --- |
| 26 | 10 | **Optimización** |  | 5d | 2024-10-15 | 2024-10-21 | 22 |  | 40h | 200 |
| 27 | 10.1 | Mejoras de responsividad | manual | 5d | 2024-10-15 | 2024-10-21 |  | Desarrollador: Christian Andrango | 40h | 200 |
| 28 | 11 | **Pruebas** |  | 5d | 2024-10-15 | 2024-10-21 | 26 |  |  |  |
| 29 | 11.1 | Pruebas de interfaz (UI testing, compatibilidad en diferentes navegadores) | manual | 5d | 2024-10-15 | 2024-10-21 |  |  |  |  |
| 30 | 12 | **Diseño del Agente Inteligente** |  | 1d | 2024-10-23 | 2024-10-23 | 28 |  |  |  |
| 31 | 12.1 | Definición de requerimientos y funcionalidades del agente | manual | 1d | 2024-10-23 | 2024-10-23 |  |  |  |  |
| 32 | 12.2 | Diseño de diálogos y flujos conversacionales | milestone, manual | 0d | 2024-10-23 | 2024-10-23 | 31 |  |  |  |
| 33 | 13 | **Integración con OpenAI API** |  | 5d | 2024-10-24 | 2024-10-30 | 30 |  |  |  |
| 34 | 13.1 | Configuración de cuenta y acceso a OpenAI API | manual | 2d | 2024-10-24 | 2024-10-25 |  |  |  |  |
| 35 | 13.2 | Implementación de la integración con la API de OpenAI | manual | 2d | 2024-10-28 | 2024-10-29 | 34 |  |  |  |
| 36 | 13.3 | Pruebas iniciales de llamadas a la API | manual | 1d | 2024-10-30 | 2024-10-30 | 35 |  |  |  |
| 37 | 14 | **Desarrollo de Lógica del Agente** |  | 7d | 2024-11-05 | 2024-11-13 | 33 |  |  |  |
| 38 | 14.1 | Implementación de procesamiento de lenguaje natural | manual | 3d | 2024-11-05 | 2024-11-07 |  |  |  |  |
| 39 | 14.2 | Definición de estrategias de respuesta y comportamiento del agente | manual | 1d | 2024-11-08 | 2024-11-08 | 38 |  |  |  |
| 40 | 14.3 | Manejo de contexto y memoria conversacional | manual | 3d | 2024-11-11 | 2024-11-13 | 39 |  |  |  |
| 41 | 15 | **Entrenamiento y Ajustes** |  | 5d | 2024-11-14 | 2024-11-20 | 37 |  |  |  |
| 42 | 15.1 | Ajuste de prompts y parámetros de la API para optimizar el desempeño | manual | 3d | 2024-11-14 | 2024-11-16 |  |  |  |  |
| 43 | 15.2 | Revisión de casos de uso y respuestas para mejorar precisión y relevancia | manual | 3d | 2024-11-18 | 2024-11-20 | 42 |  |  |  |
| 44 | 16 | **Implementación** |  | 5d | 2024-11-21 | 2024-11-27 | 41 |  |  |  |
| 45 | 16.1 | Despliegue del agente en el entorno de desarrollo | manual | 2d | 2024-11-21 | 2024-11-22 |  |  |  |  |
| 46 | 16.2 | Integración con interfaces de usuario | manual | 3d | 2024-11-25 | 2024-11-27 | 45 |  |  |  |
| 47 | 17 | **Pruebas y Optimización** |  | 12d | 2024-11-28 | 2024-12-13 | 44 |  |  |  |
| 48 | 17.1 | Pruebas de interacción con usuarios | manual | 7d | 2024-11-28 | 2024-12-06 |  |  |  |  |
| 49 | 17.2 | Optimización de respuestas basadas en feedback | manual | 5d | 2024-12-09 | 2024-12-13 | 48 |  |  |  |
